# Software Development

Schedule from MS Project, 2016-09-06 to 2017-04-04, status date 2017-03-16, A marks actual dates.

## Calendars

- Standard: Mon-Fri 08:00-12:00, 13:00-17:00; Sat-Sun off. Exceptions (off unless hours are given): 2016-10-16 08:00-12:00, 13:00-17:00, 2016-11-12 08:00-12:00, 13:00-17:00, 2017-03-11 to 2017-03-12 08:00-12:00, 13:00-17:00, 2017-03-18 to 2017-03-19 08:00-12:00, 13:00-17:00, 2017-03-26 08:00-12:00, 13:00-17:00, 2017-04-01 to 2017-04-02 08:00-12:00, 13:00-17:00.

## Resources

| Resource |
| --- |
| Management |
| Project Manager |
| Analyst |
| Developer |
| Testers |
| Pavle Boraniev |
| Technical Communicators |
| Deployment Team |
| Kazuma Sato |
| Mark Gallant-Wheeler |

## Schedule

| ID | WBS | Task | Type | Duration | Start | Finish | Predecessors | Complete | Remaining | Total slack | Constraint | Resources | Work | Actual work |
| --- | --- | --- | --- | --- | --- | --- | --- | --- | --- | --- | --- | --- | --- | --- |
| 1 | 1 | **Scope** |  | 24d | 2016-09-06 A | 2016-10-07 A |  | 100% |  |  |  | Analyst | 5.76h | 5.76h |
| 2 | 1.1 | Project Summary |  | 104h | 2016-09-06 A | 2016-09-22 A |  | 100% |  |  | finish no earlier than 2016-09-22 |  |  |  |
| 3 | 1.2 | Project Vision |  | 88h | 2016-09-23 A | 2016-10-07 A | 2 | 100% |  |  | finish no earlier than 2016-10-07 |  |  |  |
| 4 | 1.3 | Scope complete | milestone | 0d | 2016-10-07 A | 2016-10-07 A | 3 | 100% |  |  |  |  |  |  |
| 5 | 2 | **Analysis/Software Requirements** |  | 37d? | 2016-09-23 A | 2016-11-11 A | 2 | 100% |  |  |  | Analyst | 296h | 296h |
| 6 | 2.1 | High Level Requirements |  | 11d? | 2016-09-23 A | 2016-10-07 A | 2 | 100% |  |  | finish no earlier than 2016-10-07 |  |  |  |
| 7 | 2.2 | Team Charter |  | 5d? | 2016-10-10 A | 2016-10-14 A | 6 | 100% |  |  | start no earlier than 2016-10-10 |  |  |  |
| 8 | 2.3 | Project Plan |  | 5d? | 2016-10-10 A | 2016-10-14 A | 6 | 100% |  |  | start no earlier than 2016-10-10 |  |  |  |
| 9 | 2.4 | Requirements Analysis Portfolio |  | 21d? | 2016-10-16 A | 2016-11-11 A | 8 | 100% |  |  | start no earlier than 2016-10-16 |  |  |  |
| 10 | 2.5 | Analysis complete | milestone | 0d | 2016-11-11 A | 2016-11-11 A | 9 | 100% |  |  | finish no earlier than 2016-11-11 |  |  |  |
| 11 | 3 | **Design** |  | 37d | 2016-10-16 A | 2016-12-02 A |  | 100% |  |  |  | Analyst | 296h | 296h |
| 12 | 3.1 | **Design Portfolio** |  | 21d | 2016-10-16 A | 2016-11-11 A | 8 | 100% |  |  |  |  |  |  |
| 13 | 3.1.1 | Plan database data flow |  | 21d | 2016-10-16 A | 2016-11-11 A |  | 100% |  |  |  |  |  |  |
| 14 | 3.1.2 | Entity Relationship Diagram |  | 21d | 2016-10-16 A | 2016-11-11 A |  | 100% |  |  |  |  |  |  |
| 15 | 3.2 | **Wireframes** |  | 17d | 2016-11-11 A | 2016-12-02 A | 12 | 100% |  |  |  |  |  |  |
| 16 | 3.2.1 | Web Client Wireframe |  | 17d? | 2016-11-11 A | 2016-12-02 A |  | 100% |  |  | start no earlier than 2016-11-11 |  |  |  |
| 17 | 3.2.2 | Andriod Client Wireframe |  | 17d? | 2016-11-11 A | 2016-12-02 A |  | 100% |  |  | start no earlier than 2016-11-11 |  |  |  |
| 18 | 3.3 | **Prototype** |  | 16d | 2016-11-12 A | 2016-12-02 A | 12 | 100% |  |  |  |  |  |  |
| 19 | 3.3.1 | Web Client Prototype |  | 16d | 2016-11-12 A | 2016-12-02 A |  | 100% |  |  |  |  |  |  |
| 20 | 3.3.2 | Android Client Prototype |  | 16d | 2016-11-12 A | 2016-12-02 A |  | 100% |  |  |  |  |  |  |
| 21 | 3.4 | Design complete | milestone | 0d | 2016-12-02 A | 2016-12-02 A | 15, 20 | 100% |  |  | finish no earlier than 2016-12-02 |  |  |  |
| 22 | 4 | **Development** |  | 60d? | 2017-01-16 A | 2017-03-31 | 11 | 47% | 31.91d? | 0d |  | Kazuma Sato; Mark Gallant-Wheeler; Pavle Boraniev | 6496.81h | 1917.99h |
| 23 | 4.1 | **Web Host Application** |  | 49d? | 2017-01-16 A | 2017-03-19 | 11 | 65% | 17.28d? | 11d |  | Kazuma Sato; Mark Gallant-Wheeler | 3584h | 1150h |
| 24 | 4.1.1 | **Amazon Web Services** |  | 49d? | 2017-01-16 A | 2017-03-19 | 11 | 65% | 17.28d? | 11d |  | Kazuma Sato; Mark Gallant-Wheeler | 2800h | 1102h |
| 25 | 4.1.1.1 | **VPC, Route 53(Networking)** |  | 15d | 2017-01-16 A | 2017-02-03 A | 11 | 100% |  |  |  | Mark Gallant-Wheeler | 240h | 240h |
| 26 | 4.1.1.1.1 | Configuring DNS Records, Domain, SSL Cert |  | 10d | 2017-01-16 A | 2017-01-27 A | 11 | 100% |  |  |  | Mark Gallant-Wheeler | 80h | 80h |
| 27 | 4.1.1.1.2 | Subnetting VPC(Virtual Private Network) |  | 5d | 2017-01-30 A | 2017-02-03 A | 26 | 100% |  |  |  | Mark Gallant-Wheeler | 40h | 40h |

| ID | WBS | Task | Type | Duration | Start | Finish | Predecessors | Complete | Remaining | Total slack | Free slack | Constraint | Resources | Work | Actual work |
| --- | --- | --- | --- | --- | --- | --- | --- | --- | --- | --- | --- | --- | --- | --- | --- |
| 28 | 4.1.1.2 | **Cognito, IAM (Security & Access Management)** |  | 42d | 2017-01-16 A | 2017-03-12 | 11 | 71% | 12.25d | 18d |  |  | Mark Gallant-Wheeler | 384h | 58h |
| 29 | 4.1.1.2.1 | Create IAM Users, Groups, Roles, & Policies |  | 3d | 2017-01-16 A | 2017-01-18 A | 11 | 100% |  |  |  | start no earlier than 2017-01-16 | Mark Gallant-Wheeler | 24h | 24h |
| 30 | 4.1.1.2.2 | Create Cognito User Pools and Groups |  | 2d | 2017-03-11 A | 2017-03-12 | 11 | 50% | 1d | 18d |  | start no earlier than 2017-03-11 | Mark Gallant-Wheeler | 16h | 8h |
| 31 | 4.1.1.2.3 | Manage Federated Identities |  | 1d | 2017-03-12 A | 2017-03-12 | 11 | 25% | 0.75d | 18d |  | start no earlier than 2017-03-12 | Mark Gallant-Wheeler | 8h | 2h |
| 32 | 4.1.1.3 | **RDS (MySQL Database)** |  | 10d | 2017-01-16 A | 2017-01-27 A | 11 | 100% |  |  |  |  | Kazuma Sato | 160h | 160h |
| 33 | 4.1.1.3.1 | Implementation of Database Structure |  | 10d | 2017-01-16 A | 2017-01-27 A | 11 | 100% |  |  |  | start no earlier than 2017-01-16 | Kazuma Sato | 80h | 80h |
| 34 | 4.1.1.4 | **Lambda Functions** |  | 34d | 2017-02-06 A | 2017-03-19 | 29 | 50% | 17d | 11d |  |  | Kazuma Sato | 544h | 272h |
| 35 | 4.1.1.4.1 | RESTful API Scripts/Microservices |  | 34d | 2017-02-06 A | 2017-03-19 | 29 | 50% | 17d | 11d |  | finish no earlier than 2017-03-19 | Kazuma Sato | 272h | 136h |
| 36 | 4.1.1.5 | **API Gateway** |  | 22d? | 2017-02-20 A | 2017-03-17 | 29 | 63% | 8.25d? | 13d |  |  | Kazuma Sato | 528h | 308h |
| 37 | 4.1.1.5.1 | Resource Mapping, and Modeling |  | 22d? | 2017-02-20 A | 2017-03-17 | 29 | 75% | 5.5d? | 13d |  | start no earlier than 2017-02-20 | Kazuma Sato | 176h | 132h |
| 38 | 4.1.1.5.2 | Proxy Integration with Lambda |  | 22d? | 2017-02-20 A | 2017-03-17 | 29 | 50% | 11d? | 13d |  | start no earlier than 2017-02-20 | Kazuma Sato | 176h | 88h |
| 39 | 4.1.1.6 | **S3 (Storage)** |  | 6d? | 2017-03-13 A | 2017-03-18 | 29 | 25% | 4.5d? | 12d |  |  | Kazuma Sato; Mark Gallant-Wheeler | 160h | 16h |
| 40 | 4.1.1.6.1 | Create Bucket |  | 1d? | 2017-03-13 A | 2017-03-13 A | 29 | 100% |  |  |  | start no earlier than 2017-03-13 | Mark Gallant-Wheeler | 8h | 8h |
| 41 | 4.1.1.6.2 | Create Folders and set Properties |  | 1d? | 2017-03-14 A | 2017-03-14 A | 40 | 100% |  |  |  | start no earlier than 2017-02-14 | Mark Gallant-Wheeler | 8h | 8h |
| 42 | 4.1.1.6.3 | Creating trigger to Lambda |  | 6d? | 2017-03-13 | 2017-03-18 | 29 |  |  | 12d |  | start no earlier than 2017-03-13 | Kazuma Sato | 48h |  |
| 43 | 4.2 | **Client Applications** |  | 21d? | 2017-03-10 A | 2017-03-31 | 11 | 9% | 19.03d? | 0d |  |  | Kazuma Sato; Mark Gallant-Wheeler | 1472.81h | 93.77h |
| 44 | 4.2.1 | **Web Client** |  | 13d? | 2017-03-18 | 2017-03-31 | 11 |  |  | 0d |  |  | Kazuma Sato; Mark Gallant-Wheeler | 592h |  |
| 45 | 4.2.1.1 | Application Layer |  | 13d? | 2017-03-18 | 2017-03-31 | 11 |  |  | -1d | 0d | start no earlier than 2017-03-18 | Kazuma Sato; Mark Gallant-Wheeler | 208h |  |
| 46 | 4.2.1.2 | UX/UI Implementation |  | 11d? | 2017-03-20 | 2017-03-31 | 11 |  |  | -1d | 0d | start no earlier than 2017-03-20 | Kazuma Sato; Mark Gallant-Wheeler | 176h |  |
| 47 | 4.2.2 | **Andriod Client** |  | 21d? | 2017-03-10 A | 2017-03-31 | 11 | 16% | 17.55d? | 0d |  |  | Pavle Boraniev; Mark Gallant-Wheeler | 623.56h | 67.19h |
| 48 | 4.2.2.1 | Application Layer |  | 21d? | 2017-03-10 A | 2017-03-31 | 11 | 25% | 15.75d? | 0d |  | start no earlier than 2017-03-10 | Pavle Boraniev | 168h | 42h |
| 49 | 4.2.2.2 | UX/UI Implementation |  | 11d? | 2017-03-20 | 2017-03-31 | 11 |  |  | -1d | 0d | start no earlier than 2017-03-20 | Mark Gallant-Wheeler; Pavle Boraniev | 176h |  |
| 50 | 4.3 | Development complete | milestone | 0d | 2017-03-31 | 2017-03-31 | 23, 43 |  |  | -1d | 0d |  | Kazuma Sato; Mark Gallant-Wheeler; Pavle Boraniev |  |  |
| 51 | 5 | **Testing** |  | 2d? | 2017-04-01 | 2017-04-02 | 22 |  |  | 0d |  |  |  | 64h |  |
| 52 | 5.1 | Test Database Scripts |  | 2d | 2017-04-01 | 2017-04-02 | 35 |  |  | 1d |  | start no earlier than 2017-04-01 | Kazuma Sato | 16h |  |
| 53 | 5.2 | Test API |  | 1d? | 2017-04-01 | 2017-04-01 |  |  |  | 2d |  |  | Kazuma Sato | 8h |  |
| 54 | 5.3 | Test S3 Lambda Trigger |  | 1d? | 2017-04-01 | 2017-04-01 |  |  |  | 2d |  |  | Kazuma Sato | 8h |  |
| 55 | 5.4 | Test Web App |  | 2d | 2017-04-01 | 2017-04-02 | 44 |  |  | -1d | 0d | start no earlier than 2017-04-01 | Mark Gallant-Wheeler | 16h |  |
| 56 | 5.5 | Test Android Client |  | 2d | 2017-04-01 | 2017-04-02 | 47 |  |  | -1d | 0d | start no earlier than 2017-04-01 | Pavle Boraniev | 16h |  |
| 57 | 5.6 | Testing Complete | milestone | 0d | 2017-04-02 | 2017-04-02 | 21, 55, 56 |  |  | 0d |  | finish no earlier than 2017-03-31 |  |  |  |

| ID | WBS | Task | Type | Duration | Start | Finish | Predecessors | Total slack | Free slack | Constraint | Resources | Work |
| --- | --- | --- | --- | --- | --- | --- | --- | --- | --- | --- | --- | --- |
| 58 | 6 | **Documentation** |  | 25d | 2017-01-09 | 2017-02-10 |  | 44d |  |  | Kazuma Sato; Mark Gallant-Wheeler; Pavle Boraniev | 600h |
| 59 | 6.1 | System Implementation I |  | 25d | 2017-01-09 | 2017-02-10 |  | 43d | 0d | finish no earlier than 2017-02-10 |  |  |
| 60 | 6.2 | Documentation complete | milestone | 0d | 2017-02-10 | 2017-02-10 | 59 | 43d |  |  |  |  |
| 61 | 7 | **Deployment** |  | 2d | 2017-04-03 | 2017-04-04 | 57 | 0d |  |  |  | 48h |
| 62 | 7.1 | Deploy |  | 2d | 2017-04-03 | 2017-04-04 |  | 0d |  | start no earlier than 2017-04-02 | Kazuma Sato; Mark Gallant-Wheeler; Pavle Boraniev | 48h |
| 63 | 7.2 | Deployment complete | milestone | 0d | 2017-04-04 | 2017-04-04 | 62 | 0d |  |  |  |  |
