# Software Development

Schedule from MS Project, 2016-09-06 to 2017-04-13, status date 2017-03-24, A marks actual dates.

## Calendars

- Standard: Mon-Fri 08:00-12:00, 13:00-17:00; Sat-Sun off. Exceptions (off unless hours are given): 2016-10-16 08:00-12:00, 13:00-17:00, 2016-11-12 08:00-12:00, 13:00-17:00, 2017-03-11 to 2017-03-12 08:00-12:00, 13:00-17:00, 2017-03-18 to 2017-03-19 08:00-12:00, 13:00-17:00, 2017-03-26 08:00-12:00, 13:00-17:00, 2017-04-01 to 2017-04-02 08:00-12:00, 13:00-17:00, 2017-04-06 to 2017-04-11 08:00-12:00, 13:00-17:00.

## Resources

| Resource |
| --- |
| Management |
| Project Manager |
| Analyst |
| Developer |
| Testers |
| Pavle Boraniev |
| Technical Communicators |
| Deployment Team |
| Kazuma Sato |
| Mark Gallant-Wheeler |

## Schedule

| ID | WBS | Task | Type | Duration | Start | Finish | Predecessors | Complete | Remaining | Total slack | Constraint | Resources | Work | Actual work |
| --- | --- | --- | --- | --- | --- | --- | --- | --- | --- | --- | --- | --- | --- | --- |
| 1 | 1 | **Scope** |  | 24d | 2016-09-06 A | 2016-10-07 A |  | 100% |  |  |  | Kazuma Sato; Mark Gallant-Wheeler; Pavle Boraniev | 576h | 576h |
| 2 | 1.1 | Project Summary |  | 104h | 2016-09-06 A | 2016-09-22 A |  | 100% |  |  | finish no earlier than 2016-09-22 |  |  |  |
| 3 | 1.2 | Project Vision |  | 88h | 2016-09-23 A | 2016-10-07 A | 2 | 100% |  |  | finish no earlier than 2016-10-07 |  |  |  |
| 4 | 1.3 | Scope complete | milestone | 0d | 2016-10-07 A | 2016-10-07 A | 3 | 100% |  |  |  |  |  |  |
| 5 | 2 | **Analysis/Software Requirements** |  | 37d? | 2016-09-23 A | 2016-11-11 A | 2 | 100% |  |  |  | Kazuma Sato; Mark Gallant-Wheeler; Pavle Boraniev | 888h | 888h |
| 6 | 2.1 | High Level Requirements |  | 11d? | 2016-09-23 A | 2016-10-07 A | 2 | 100% |  |  | finish no earlier than 2016-10-07 |  |  |  |
| 7 | 2.2 | Team Charter |  | 5d? | 2016-10-10 A | 2016-10-14 A | 6 | 100% |  |  | start no earlier than 2016-10-10 |  |  |  |
| 8 | 2.3 | Project Plan |  | 5d? | 2016-10-10 A | 2016-10-14 A | 6 | 100% |  |  | start no earlier than 2016-10-10 |  |  |  |
| 9 | 2.4 | Requirements Analysis Portfolio |  | 21d? | 2016-10-16 A | 2016-11-11 A | 8 | 100% |  |  | start no earlier than 2016-10-16 |  |  |  |
| 10 | 2.5 | Analysis complete | milestone | 0d | 2016-11-11 A | 2016-11-11 A | 9 | 100% |  |  | finish no earlier than 2016-11-11 |  |  |  |
| 11 | 3 | **Design** |  | 37d | 2016-10-16 A | 2016-12-02 A |  | 100% |  |  |  | Kazuma Sato; Mark Gallant-Wheeler; Pavle Boraniev | 888h | 888h |
| 12 | 3.1 | **Design Portfolio** |  | 21d | 2016-10-16 A | 2016-11-11 A | 8 | 100% |  |  |  |  |  |  |
| 13 | 3.1.1 | Plan database data flow |  | 21d | 2016-10-16 A | 2016-11-11 A |  | 100% |  |  |  |  |  |  |
| 14 | 3.1.2 | Entity Relationship Diagram |  | 21d | 2016-10-16 A | 2016-11-11 A |  | 100% |  |  |  |  |  |  |
| 15 | 3.2 | **Wireframes** |  | 17d | 2016-11-11 A | 2016-12-02 A | 12 | 100% |  |  |  |  |  |  |
| 16 | 3.2.1 | Web Client Wireframe |  | 17d? | 2016-11-11 A | 2016-12-02 A |  | 100% |  |  | start no earlier than 2016-11-11 |  |  |  |
| 17 | 3.2.2 | Andriod Client Wireframe |  | 17d? | 2016-11-11 A | 2016-12-02 A |  | 100% |  |  | start no earlier than 2016-11-11 |  |  |  |
| 18 | 3.3 | **Prototype** |  | 16d | 2016-11-12 A | 2016-12-02 A | 12 | 100% |  |  |  |  |  |  |
| 19 | 3.3.1 | Web Client Prototype |  | 16d | 2016-11-12 A | 2016-12-02 A |  | 100% |  |  |  |  |  |  |
| 20 | 3.3.2 | Android Client Prototype |  | 16d | 2016-11-12 A | 2016-12-02 A |  | 100% |  |  |  |  |  |  |
| 21 | 3.4 | Design complete | milestone | 0d | 2016-12-02 A | 2016-12-02 A | 15, 20 | 100% |  |  | finish no earlier than 2016-12-02 |  |  |  |
| 22 | 4 | **Development** |  | 71d? | 2017-01-16 A | 2017-04-11 | 11 | 89% | 7.68d? | 2d |  | Kazuma Sato; Mark Gallant-Wheeler; Pavle Boraniev | 8304.81h | 7268.58h |
| 23 | 4.1 | **Web Host Application** |  | 66d? | 2017-01-16 A | 2017-04-06 A | 11 | 100% |  |  |  | Kazuma Sato; Mark Gallant-Wheeler | 4840h | 4840h |
| 24 | 4.1.1 | **Amazon Web Services** |  | 66d? | 2017-01-16 A | 2017-04-06 A | 11 | 100% |  |  |  | Kazuma Sato; Mark Gallant-Wheeler | 3784h | 3784h |
| 25 | 4.1.1.1 | **VPC, Route 53(Networking)** |  | 15d | 2017-01-16 A | 2017-02-03 A | 11 | 100% |  |  |  | Mark Gallant-Wheeler | 240h | 240h |
| 26 | 4.1.1.1.1 | Configuring DNS Records, Domain, SSL Cert |  | 10d | 2017-01-16 A | 2017-01-27 A | 11 | 100% |  |  |  | Mark Gallant-Wheeler | 80h | 80h |
| 27 | 4.1.1.1.2 | Subnetting VPC(Virtual Private Network) |  | 5d | 2017-01-30 A | 2017-02-03 A | 26 | 100% |  |  |  | Mark Gallant-Wheeler | 40h | 40h |

| ID | WBS | Task | Type | Duration | Start | Finish | Predecessors | Complete | Remaining | Total slack | Free slack | Constraint | Resources | Work | Actual work |
| --- | --- | --- | --- | --- | --- | --- | --- | --- | --- | --- | --- | --- | --- | --- | --- |
| 28 | 4.1.1.2 | **Cognito, IAM (Security & Access Management)** |  | 42d | 2017-01-16 A | 2017-03-12 A | 11 | 100% |  |  |  |  | Mark Gallant-Wheeler | 384h | 384h |
| 29 | 4.1.1.2.1 | Create IAM Users, Groups, Roles, & Policies |  | 3d | 2017-01-16 A | 2017-01-18 A | 11 | 100% |  |  |  | start no earlier than 2017-01-16 | Mark Gallant-Wheeler | 24h | 24h |
| 30 | 4.1.1.2.2 | Create Cognito User Pools and Groups |  | 2d | 2017-03-11 A | 2017-03-12 A | 11 | 100% |  |  |  | start no earlier than 2017-03-11 | Mark Gallant-Wheeler | 16h | 16h |
| 31 | 4.1.1.2.3 | Manage Federated Identities |  | 1d | 2017-03-12 A | 2017-03-12 A | 11 | 100% |  |  |  | start no earlier than 2017-03-12 | Mark Gallant-Wheeler | 8h | 8h |
| 32 | 4.1.1.3 | **RDS (MySQL Database)** |  | 10d | 2017-01-16 A | 2017-01-27 A | 11 | 100% |  |  |  |  | Kazuma Sato | 160h | 160h |
| 33 | 4.1.1.3.1 | Implementation of Database Structure |  | 10d | 2017-01-16 A | 2017-01-27 A | 11 | 100% |  |  |  | start no earlier than 2017-01-16 | Kazuma Sato | 80h | 80h |
| 34 | 4.1.1.4 | **Lambda Functions** |  | 51d | 2017-02-06 A | 2017-04-06 A | 29 | 100% |  |  |  |  | Kazuma Sato | 816h | 816h |
| 35 | 4.1.1.4.1 | RESTful API Scripts/Microservices |  | 51d | 2017-02-06 A | 2017-04-06 A | 29 | 100% |  |  |  | finish no earlier than 2017-04-06 | Kazuma Sato | 408h | 408h |
| 36 | 4.1.1.5 | **API Gateway** |  | 41d | 2017-02-20 A | 2017-04-06 A | 29 | 100% |  |  |  |  | Kazuma Sato | 680h | 680h |
| 37 | 4.1.1.5.1 | Resource Mapping, and Modeling |  | 22d? | 2017-02-20 A | 2017-03-17 A | 29 | 100% |  |  |  | start no earlier than 2017-02-20 | Kazuma Sato | 176h | 176h |
| 38 | 4.1.1.5.2 | Proxy Integration with Lambda |  | 22d? | 2017-02-20 A | 2017-03-17 A | 29 | 100% |  |  |  | start no earlier than 2017-02-20 | Kazuma Sato | 176h | 176h |
| 39 | 4.1.1.6 | **S3 (Storage)** |  | 24d | 2017-03-13 A | 2017-04-06 A | 29 | 100% |  |  |  |  | Kazuma Sato; Mark Gallant-Wheeler | 448h | 448h |
| 40 | 4.1.1.6.1 | Create Bucket |  | 1d? | 2017-03-13 A | 2017-03-13 A | 29 | 100% |  |  |  | start no earlier than 2017-03-13 | Mark Gallant-Wheeler | 8h | 8h |
| 41 | 4.1.1.6.2 | Create Folders and set Properties |  | 1d? | 2017-03-14 A | 2017-03-14 A | 40 | 100% |  |  |  | start no earlier than 2017-02-14 | Mark Gallant-Wheeler | 8h | 8h |
| 42 | 4.1.1.6.3 | Creating trigger to Lambda |  | 6d? | 2017-03-13 A | 2017-03-18 A | 29 | 100% |  |  |  | start no earlier than 2017-03-13 | Kazuma Sato | 48h | 48h |
| 43 | 4.2 | **Client Applications** |  | 27d | 2017-03-10 A | 2017-04-06 | 11 | 68% | 8.77d |  |  |  | Kazuma Sato; Mark Gallant-Wheeler | 1808.81h | 1080.14h |
| 44 | 4.2.1 | **Web Client** |  | 19d | 2017-03-18 A | 2017-04-06 A | 11 | 100% |  |  |  |  | Kazuma Sato; Mark Gallant-Wheeler | 688h | 688h |
| 45 | 4.2.1.1 | Application Layer |  | 13d? | 2017-03-18 A | 2017-03-31 A | 11 | 100% |  |  |  | start no earlier than 2017-03-18 | Kazuma Sato; Mark Gallant-Wheeler | 208h | 208h |
| 46 | 4.2.1.2 | UX/UI Implementation |  | 11d? | 2017-03-20 A | 2017-03-31 A | 11 | 100% |  |  |  | start no earlier than 2017-03-20 | Kazuma Sato; Mark Gallant-Wheeler | 176h | 176h |
| 47 | 4.2.2 | **Andriod Client** |  | 30d | 2017-03-10 A | 2017-04-09 | 11 | 49% | 15.17d |  |  |  | Pavle Boraniev; Mark Gallant-Wheeler | 767.56h | 365.56h |
| 48 | 4.2.2.1 | Application Layer |  | 21d? | 2017-03-10 A | 2017-03-31 | 11 | 75% | 5.25d? | 13d |  | start no earlier than 2017-03-10 | Pavle Boraniev | 168h | 126h |
| 49 | 4.2.2.2 | UX/UI Implementation |  | 22d? | 2017-03-20 A | 2017-04-11 | 11 | 25% | 16.5d? | 2d |  | finish no earlier than 2017-04-11 | Pavle Boraniev | 176h | 44h |
| 50 | 4.3 | Development complete | milestone | 0d | 2017-04-11 | 2017-04-11 | 23, 43 |  |  | -61d | 0d | finish no earlier than 2017-04-11 |  |  |  |
| 51 | 5 | **Testing** |  | 61d | 2017-01-30 A | 2017-04-11 | 50 | 72% | 17.08d |  |  |  | Kazuma Sato; Mark Gallant-Wheeler; Pavle Boraniev | 1664h | 1200h |
| 52 | 5.1 | **Amazon Web Services** |  | 56d | 2017-01-30 A | 2017-04-06 A |  | 100% |  |  |  |  |  | 144h | 144h |
| 53 | 5.1.1 | Test Database Scripts |  | 6d | 2017-01-30 A | 2017-04-06 A | 32 | 100% |  |  |  | finish no earlier than 2017-04-06 | Kazuma Sato | 48h | 48h |
| 54 | 5.1.2 | Test API |  | 6d | 2017-03-19 A | 2017-04-06 A | 24 | 100% |  |  |  | finish no earlier than 2017-04-06 | Kazuma Sato | 48h | 48h |
| 55 | 5.1.3 | Test S3 Lambda Trigger |  | 6d | 2017-03-19 A | 2017-04-06 A | 34, 39 | 100% |  |  |  | finish no earlier than 2017-04-06 | Kazuma Sato | 48h | 48h |

| ID | WBS | Task | Type | Duration | Start | Finish | Predecessors | Total slack | Free slack | Constraint | Resources | Work |
| --- | --- | --- | --- | --- | --- | --- | --- | --- | --- | --- | --- | --- |
| 56 | 5.2 | **Client Applications** |  | 1d? | 2017-04-07 | 2017-04-07 |  |  |  |  |  | 56h |
| 57 | 5.2.1 | Test Web App |  | 5d | 2017-04-07 | 2017-04-11 | 44, 23 | 2d |  | finish no earlier than 2017-04-11 | Mark Gallant-Wheeler | 40h |
| 58 | 5.2.2 | Test Android Client |  | 2d | 2017-04-10 | 2017-04-11 | 47, 23 | 2d |  | start no earlier than 2017-04-01 | Pavle Boraniev | 16h |
| 59 | 5.3 | Testing Complete | milestone | 0d | 2017-04-11 | 2017-04-11 | 52, 56 | 2d |  | finish no earlier than 2017-04-11 |  |  |
| 60 | 6 | **Deployment** |  | 10d | 2017-04-02 | 2017-04-11 | 50 |  |  |  | Kazuma Sato; Mark Gallant-Wheeler; Pavle Boraniev | 968h |
| 61 | 6.1 | **Web Host Application** |  | 10d | 2017-04-02 | 2017-04-11 | 24, 53, 54, 55 |  |  |  | Kazuma Sato | 696h |
| 62 | 6.1.1 | **Amazon Web Services** |  | 10d | 2017-04-02 | 2017-04-11 | 24, 53, 54, 56 |  |  |  | Kazuma Sato | 616h |
| 63 | 6.1.1.1 | **RDS (MySQL Database)** |  | 9d | 2017-04-03 | 2017-04-11 | 32, 53 |  |  |  | Kazuma Sato | 216h |
| 64 | 6.1.1.1.1 | Development and Testing Database Dropped | manual | 9d | 2017-04-03 | 2017-04-11 | 32, 53 |  |  |  | Kazuma Sato | 72h |
| 65 | 6.1.1.1.2 | Deploy Production Server with Default Values | manual | 9d | 2017-04-03 | 2017-04-11 | 32, 53 |  |  |  | Kazuma Sato | 72h |
| 66 | 6.1.1.2 | **API Gateway** |  | 10d | 2017-04-02 | 2017-04-11 | 23, 54 |  |  |  | Kazuma Sato | 320h |
| 67 | 6.1.1.2.1 | Set Production Stage | manual | 10d | 2017-04-02 | 2017-04-11 | 23, 54 |  |  |  | Kazuma Sato | 80h |
| 68 | 6.1.1.2.2 | Set Stage Variable | manual | 10d | 2017-04-02 | 2017-04-11 | 23, 54 |  |  |  | Kazuma Sato | 80h |
| 69 | 6.1.1.2.3 | Set CNAME record on api.crosscampus.xcamp.us subdomain to Prod Stage | manual | 10d | 2017-04-02 | 2017-04-11 | 23, 54 |  |  |  | Kazuma Sato | 80h |
| 70 | 6.2 | **Client Applications** |  | 1d | 2017-04-10 | 2017-04-10 | 44, 47 | 3d | 1d |  | Mark Gallant-Wheeler; Pavle Boraniev | 32h |
| 71 | 6.2.1 | Web Client |  | 1d | 2017-04-10 | 2017-04-10 | 44 | 3d |  |  | Mark Gallant-Wheeler | 8h |
| 72 | 6.2.2 | Andriod Client |  | 1d | 2017-04-10 | 2017-04-10 | 47 | 3d |  |  | Pavle Boraniev | 8h |
| 73 | 6.3 | Deployment complete | milestone, manual | 0d | 2017-04-12 | 2017-04-12 | 61, 70 |  |  |  |  |  |
| 74 | 7 | **Documentation** |  | 7d | 2017-04-06 | 2017-04-12 |  |  |  |  | Kazuma Sato; Mark Gallant-Wheeler; Pavle Boraniev | 896h |
| 75 | 7.1 | **System Implementation - Final Update** |  | 7d | 2017-04-06 | 2017-04-12 |  |  |  |  | Kazuma Sato; Mark Gallant-Wheeler; Pavle Boraniev | 728h |
| 76 | 7.1.1 | **Presentation** |  | 7d | 2017-04-06 | 2017-04-12 |  |  |  |  | Kazuma Sato; Mark Gallant-Wheeler; Pavle Boraniev | 504h |
| 77 | 7.1.1.1 | Demonstation | manual | 7d | 2017-04-06 | 2017-04-12 |  |  |  |  | Kazuma Sato; Mark Gallant-Wheeler; Pavle Boraniev | 168h |
| 78 | 7.1.1.2 | Visual Material | manual | 7d | 2017-04-06 | 2017-04-12 |  |  |  |  | Kazuma Sato; Mark Gallant-Wheeler; Pavle Boraniev | 168h |
| 79 | 7.1.2 | Project Closure Report | manual | 7d | 2017-04-06 | 2017-04-12 |  |  |  |  | Kazuma Sato | 56h |
| 80 | 7.2 | Documantation Complete | milestone, manual | 0d | 2017-04-12 | 2017-04-12 | 75 |  |  |  |  |  |
| 81 | 8 | Project Complete | milestone, manual | 0d | 2017-04-13 | 2017-04-13 | 59, 73, 80 |  |  |  |  |  |
